# Toll Fee Management_MasterPlan

Schedule from MS Project, 2011-05-09 to 2011-08-22, scheduled back from the finish.

## Calendars

- Standard: Mon-Fri 08:00-12:00, 13:00-17:00; Sat-Sun off.

## Resources

| Resource |
| --- |
| DangTH |
| HieuNX |
| LinhNAN |
| US Team |
| QuanTV |
| VuND |

## Schedule

| ID | WBS | Task | Type | Duration | Start | Finish | Predecessors | Total slack | Free slack | Constraint | Resources | Work |
| --- | --- | --- | --- | --- | --- | --- | --- | --- | --- | --- | --- | --- |
| 1 | 1 | **Toll Fee Management Capstone Project** |  | 76d | 2011-05-09 | 2011-08-22 |  |  |  | as late as possible |  | 1408h |
| 2 | 1.1 | **Inception** |  | 11d | 2011-05-09 | 2011-05-23 |  |  |  | as late as possible |  | 184h |
| 3 | 1.1.1 | **Initiation** |  | 1d | 2011-05-23 | 2011-05-23 |  | 10d | 0d | as late as possible |  | 8h |
| 4 | 1.1.1.1 | Prepare register |  | 4h | 2011-05-23 | 2011-05-23 |  | 10d | 0d | as late as possible | LinhNAN | 4h |
| 5 | 1.1.1.2 | Kick off Meeting |  | 4h | 2011-05-23 | 2011-05-23 | 4 | 10d | 0d | as late as possible | US Team | 4h |
| 6 | 1.1.2 | **Researching technologies and algorithm** |  | 6d | 2011-05-09 | 2011-05-16 |  |  |  | as late as possible |  | 72h |
| 7 | 1.1.2.1 | Research existing systems |  | 1d | 2011-05-09 | 2011-05-09 |  | 0d |  | start no later than 2011-05-09 | HieuNX | 8h |
| 8 | 1.1.2.2 | Research algorithm |  | 1d | 2011-05-10 | 2011-05-10 | 7 | 0d |  | start no later than 2011-05-10 | DangTH | 8h |
| 9 | 1.1.2.3 | **Create project demo** |  | 4d | 2011-05-11 | 2011-05-16 |  |  |  | as late as possible |  | 56h |
| 10 | 1.1.2.3.1 | Show and control camera in application |  | 1d | 2011-05-11 | 2011-05-11 | 7 | 1d | 0d | start no later than 2011-05-11 | HieuNX | 8h |
| 11 | 1.1.2.3.2 | Recognized characters and numbers |  | 3d | 2011-05-12 | 2011-05-16 | 8 | 1d | 0d | as late as possible | DangTH; HieuNX | 48h |
| 12 | 1.1.3 | **Create report No.1** |  | 6d | 2011-05-09 | 2011-05-16 |  |  |  | as late as possible |  | 64h |
| 13 | 1.1.3.1 | Overview existing methods and systems |  | 3d | 2011-05-09 | 2011-05-11 |  | 0d |  | start no later than 2011-05-09 | QuanTV | 24h |
| 14 | 1.1.3.2 | Write background |  | 1d | 2011-05-12 | 2011-05-12 | 13 | 0d |  | start no later than 2011-05-12 | LinhNAN | 8h |
| 15 | 1.1.3.3 | Fix comments |  | 2d | 2011-05-13 | 2011-05-16 | 14 | 0d |  | as late as possible | LinhNAN; VuND | 32h |
| 16 | 1.1.3.4 | Summit report 1 | milestone | 0d | 2011-05-16 | 2011-05-16 |  | 5d | 0d | start no later than 2011-05-16 |  |  |
| 17 | 1.1.4 | **Develop project plan** |  | 5d | 2011-05-17 | 2011-05-23 |  |  |  | as late as possible |  | 40h |
| 18 | 1.1.4.1 | Team planning meeting |  | 1d? | 2011-05-17 | 2011-05-17 |  | 6d | 0d | start no later than 2011-05-17 | US Team | 8h |
| 19 | 1.1.4.2 | Identifying, dicussing, and prioritizing risks |  | 2d | 2011-05-18 | 2011-05-19 | 18 | 6d | 0d | start no later than 2011-05-18 | US Team | 16h |
| 20 | 1.1.4.3 | Create report 2 draff |  | 1d? | 2011-05-20 | 2011-05-20 | 19 | 6d | 0d | start no later than 2011-05-20 | LinhNAN | 8h |
| 21 | 1.1.4.4 | Review Project Plan |  | 1d? | 2011-05-23 | 2011-05-23 | 20 | 4d | 0d | as late as possible | LinhNAN | 8h |
| 22 | 1.1.4.5 | Summit report No.2 | milestone | 0d | 2011-05-23 | 2011-05-23 |  | 10d | 0d | start no later than 2011-05-23 |  |  |
| 23 | 1.2 | **Elaboration** |  | 57d | 2011-05-24 | 2011-08-10 |  |  |  | as late as possible |  | 320h |
| 24 | 1.2.1 | **Analysis** |  | 9d | 2011-05-24 | 2011-06-03 |  |  |  | as late as possible |  | 112h |
| 25 | 1.2.1.1 | **Create Software Requirements Specifications** |  | 9d | 2011-05-24 | 2011-06-03 |  |  |  | as late as possible |  | 112h |
| 26 | 1.2.1.1.1 | User Requirement Specification |  | 3d | 2011-05-24 | 2011-05-26 |  | 11d | 0d | start no later than 2011-05-24 | QuanTV; LinhNAN | 48h |
| 27 | 1.2.1.1.2 | System Requirement Specification |  | 4d | 2011-05-27 | 2011-06-01 | 26 | 11d | 0d | start no later than 2011-05-27 | US Team | 32h |
| 28 | 1.2.1.1.3 | Review SRS |  | 2d | 2011-06-02 | 2011-06-03 | 27 | 7d | 0d | as late as possible | LinhNAN; QuanTV | 32h |
| 29 | 1.2.1.1.4 | Submit report No.3 Software Requirements Specifications | milestone | 0d | 2011-06-03 | 2011-06-03 |  | 9d | 0d | as late as possible |  |  |

| ID | WBS | Task | Type | Duration | Start | Finish | Predecessors | Total slack | Free slack | Constraint | Resources | Work |
| --- | --- | --- | --- | --- | --- | --- | --- | --- | --- | --- | --- | --- |
| 30 | 1.2.2 | **Design** |  | 12d | 2011-06-02 | 2011-06-17 |  |  |  | as late as possible |  | 208h |
| 31 | 1.2.2.1 | Database Design |  | 2d | 2011-06-02 | 2011-06-03 | 27 | 0d |  |  | DangTH; HieuNX | 32h |
| 32 | 1.2.2.2 | System Architecture Design |  | 3d | 2011-06-06 | 2011-06-08 | 31 | 0d |  |  | LinhNAN | 24h |
| 33 | 1.2.2.3 | Create Code Prototype |  | 5d? | 2011-06-09 | 2011-06-15 | 32 | 0d |  | finish no later than 2011-06-15 | US Team | 40h |
| 34 | 1.2.2.4 | Detailed design |  | 10d | 2011-06-02 | 2011-06-15 | 27 | 0d |  | as late as possible | US Team | 80h |
| 35 | 1.2.2.5 | User Interface Design |  | 2d | 2011-06-16 | 2011-06-17 | 34 | 0d |  |  | QuanTV; VuND | 32h |
| 36 | 1.2.2.6 | Submit report No.4 Software Design Description (SDD) | milestone | 0d | 2011-06-17 | 2011-06-17 |  | 12d | 0d | as late as possible |  |  |
| 37 | 1.3 | **Construction** |  | 40d | 2011-06-20 | 2011-08-12 |  |  |  | as late as possible |  | 856h |
| 38 | 1.3.1 | **Coding** |  | 30d | 2011-06-20 | 2011-07-29 |  |  |  | as late as possible |  | 760h |
| 39 | 1.3.1.1 | Client Development |  | 15d | 2011-06-20 | 2011-07-08 |  | 30d | 0d | start no later than 2011-06-20 | DangTH; HieuNX; LinhNAN | 360h |
| 40 | 1.3.1.2 | Server Development |  | 10d | 2011-07-11 | 2011-07-22 |  | 45d | 0d | start no later than 2011-07-11 | HieuNX; QuanTV; VuND | 240h |
| 41 | 1.3.1.3 | Crawl and synchronize Data Development |  | 5d | 2011-07-25 | 2011-07-29 | 40 | 25d | 0d | as late as possible | LinhNAN; HieuNX | 80h |
| 42 | 1.3.1.4 | Create Software User’s Manual (SUM) |  | 5d? | 2011-07-25 | 2011-07-29 | 39, 40 | 40d | 0d | finish no later than 2011-07-29 | VuND; QuanTV | 80h |
| 43 | 1.3.2 | **Testing** |  | 8d | 2011-08-01 | 2011-08-10 |  |  |  | as late as possible |  | 80h |
| 44 | 1.3.2.1 | Create Test Plan |  | 1d? | 2011-08-01 | 2011-08-01 |  | 60d | 0d | start no later than 2011-08-01 | VuND | 8h |
| 45 | 1.3.2.2 | Integration Test |  | 2d | 2011-08-02 | 2011-08-03 | 44 | 60d | 0d | finish no later than 2011-08-03 | US Team | 16h |
| 46 | 1.3.2.3 | System Test |  | 3d | 2011-08-04 | 2011-08-08 | 45 | 60d | 0d | finish no later than 2011-08-08 | US Team | 24h |
| 47 | 1.3.2.4 | Create and submit Report No.5 Software Test Documentation (STD) |  | 2d | 2011-08-09 | 2011-08-10 | 46 | 60d | 0d | start no later than 2011-08-09 | LinhNAN; VuND | 32h |
| 48 | 1.3.3 | **Deployment** |  | 2d | 2011-08-11 | 2011-08-12 |  |  |  | as late as possible |  | 16h |
| 49 | 1.3.3.1 | Input dummy data |  | 1d? | 2011-08-11 | 2011-08-11 |  | 0d |  |  | US Team | 8h |
| 50 | 1.3.3.2 | Deploy system |  | 1d? | 2011-08-12 | 2011-08-12 | 49 | 0d |  | start no later than 2011-08-12 | US Team | 8h |
| 51 | 1.3.3.3 | Complete Deploy System | milestone | 0d | 2011-08-12 | 2011-08-12 |  | 2d | 0d | as late as possible |  |  |
| 52 | 1.4 | **Transition** |  | 6d | 2011-08-15 | 2011-08-22 |  |  |  | as late as possible |  | 48h |
| 53 | 1.4.1 | **Preclosing** |  | 5d | 2011-08-12 | 2011-08-18 |  |  |  | as late as possible |  | 40h |
| 54 | 1.4.1.1 | Complete program and documents |  | 5d | 2011-08-12 | 2011-08-18 |  | 0d |  |  | US Team | 40h |
| 55 | 1.4.1.2 | Submit the last Document and CD source code | milestone | 0d | 2011-08-18 | 2011-08-18 | 54 | 0d |  |  |  |  |

| ID | WBS | Task | Type | Duration | Start | Finish | Predecessors | Total slack | Free slack | Constraint | Resources | Work |
| --- | --- | --- | --- | --- | --- | --- | --- | --- | --- | --- | --- | --- |
| 56 | 1.4.2 | **Closing** |  | 1d | 2011-08-22 | 2011-08-22 | 55 |  |  | as late as possible |  | 8h |
| 57 | 1.4.2.1 | Represent Capstone Project |  | 1d? | 2011-08-22 | 2011-08-22 |  | 75d | 0d | finish no later than 2011-08-22 | US Team | 8h |
| 58 | 1.4.2.2 | Project completed | milestone | 0d | 2011-08-22 | 2011-08-22 |  | 75d | 0d | start no later than 2011-08-22 |  |  |
